# 甘特图1.2V

Schedule from MS Project, 2018-09-19 to 2019-01-16, 2 hours a day, A marks actual dates.

## Calendars

- Standard: Mon-Fri 08:00-12:00, 13:00-17:00; Sat-Sun off. Exceptions (off unless hours are given): 2018-09-19 to 2019-01-14 08:00-12:00, 13:00-17:00 (工作日).
- Calendar 1: Mon-Fri 08:00-12:00, 13:00-17:00; Sat-Sun off. Exceptions (off unless hours are given): 2018-09-19 to 2019-01-13 17:00-18:00, 19:00-20:00 (working, recurring), 2018-10-01 to 2018-10-07 (国庆节), 2019-01-13 10:00-12:00, 17:00-20:00 (team building).
- 需求项目工程: Mon-Fri 08:00-12:00, 13:00-17:00; Sat-Sun off. Exceptions (off unless hours are given): 2018-09-19 to 2019-01-13 17:00-18:00, 19:00-20:00 (working, recurring), 2018-10-01 to 2018-10-07 (国庆节), 2019-01-13 08:00-12:00, 17:00-20:00 (team building).

## Resources

| Resource |
| --- |
| 刘向辉 |
| 左文正 |
| 陈祥斌 |
| 涂弘森 |
| 王安栋 |

## Schedule

| ID | WBS | Task | Type | Duration | Start | Finish | Predecessors | Complete | Remaining | Actual start | Actual finish | Constraint | Calendar | Resources | Work | Actual work | 总负责人 |
| --- | --- | --- | --- | --- | --- | --- | --- | --- | --- | --- | --- | --- | --- | --- | --- | --- | --- |
| 1 | 1 | **软件工程系列课程教学辅助网站** |  | 253h | 2018-09-19 08:00 A | 2019-01-16 14:00 |  | 83% | 42.93h |  |  |  | Calendar 1 | 左文正 [20%]; 陈祥斌 [20%]; 刘向辉 [20%]; 涂弘森 [20%]; 王安栋 [20%] | 902.47h | 479.97h | 刘向辉 |
| 2 | 1.1 | **项目前期准备** |  | 34h | 2018-09-19 08:00 | 2018-09-30 21:00 |  | 100% |  | 2018-09-21 17:00 | 2018-09-23 20:00 |  | Calendar 1 |  | 16h | 16h |  |
| 3 | 1.1.1 | 小组第一次会议（讨论项目选题和后期分配资源） | milestone, manual | 2h | 2018-09-21 17:00 A | 2018-09-21 20:00 A |  | 100% |  |  |  |  | Calendar 1 | 左文正; 陈祥斌; 刘向辉; 涂弘森; 王安栋 | 10h | 10h | 左文正 |
| 4 | 1.1.2 | 资源配置 | manual | 4h | 2018-09-22 17:00 A | 2018-09-23 20:00 A | 3 | 100% |  |  |  | start no earlier than 2018-09-22 17:00 | Calendar 1 | 陈祥斌 | 4h | 4h | 陈祥斌 |
| 5 | 1.1.3 | logo设计 | manual | 2h | 2018-09-22 17:00 A | 2018-09-22 20:00 A | 3 | 100% |  |  |  |  | Calendar 1 | 涂弘森 [25%]; 刘向辉 [75%] | 2h | 2h | 涂弘森 |
| 6 | 1.2 | **项目计划** |  | 97h | 2018-09-27 17:00 A | 2018-11-21 19:00 | 2 | 96% | 3.51h |  |  |  | Calendar 1 |  | 123h | 120h |  |
| 7 | 1.2.1 | 小组第二次会议 | manual | 1h | 2018-09-27 17:00 A | 2018-09-27 18:00 A | 3FS+10h | 100% |  |  |  |  | Calendar 1 | 左文正; 陈祥斌; 刘向辉; 涂弘森; 王安栋 | 5h | 5h | 左文正 |
| 8 | 1.2.2 | 第二次会议记录 | manual | 0.5h | 2018-09-28 08:00 A | 2018-09-28 08:30 A | 7 | 100% |  |  |  |  |  | 左文正 | 0.5h | 0.5h |  |
| 9 | 1.2.3 | 甘特图绘制V0.1 | manual | 4h | 2018-09-27 19:00 A | 2018-09-29 18:00 A | 7 | 100% |  |  |  |  | Calendar 1 | 王安栋 | 4h | 4h | 王安栋 |
| 10 | 1.2.4 | WBS绘制 | manual | 2h | 2018-09-29 17:00 A | 2018-09-29 20:00 A | 7FS+3h | 100% |  |  |  |  | Calendar 1 | 左文正 | 2h | 2h | 左文正 |
| 11 | 1.2.5 | OBS绘制 | manual | 1h | 2018-09-29 17:00 A | 2018-09-29 18:00 A | 7FS+3h | 100% |  |  |  |  | Calendar 1 | 陈祥斌 | 1h | 1h | 陈祥斌 |
| 12 | 1.2.6 | 需求项目计划V0.1 | manual | 5h | 2018-09-30 17:00 A | 2018-10-09 18:00 | 7FS+5h | 40% | 3h |  |  |  | Calendar 1 | 左文正 [20%]; 陈祥斌 [20%]; 刘向辉 [20%]; 涂弘森 [20%]; 王安栋 [20%] | 5h | 2h | 刘向辉 |
| 13 | 1.2.7 | 需求项目计划PPT制作0.1 | manual | 1h | 2018-09-30 17:00 A | 2018-09-30 18:00 A | 12FS-2h | 100% |  |  |  |  | Calendar 1 | 左文正 | 1h | 1h |  |
| 14 | 1.2.8 | 小组第三次会议 | manual | 1h | 2018-10-12 19:00 A | 2018-10-12 20:00 A | 7FS+30h | 100% |  |  |  |  | Calendar 1 | 左文正; 陈祥斌; 刘向辉; 涂弘森; 王安栋 | 5h | 5h | 左文正 |
| 15 | 1.2.9 | 第三次会议记录 | manual | 0.5h | 2018-10-12 16:00 A | 2018-10-12 16:30 A | 14SS-1h | 100% |  |  |  |  |  | 左文正 | 0.5h | 0.5h |  |
| 16 | 1.2.10 | 方案设计（模板） | manual | 2h | 2018-10-12 19:00 A | 2018-10-13 18:00 A | 14FS-1h | 100% |  |  |  |  | Calendar 1 | 涂弘森 | 2h | 2h | 涂弘森 |
| 17 | 1.2.11 | 可行性分析报告V0.1 | milestone, manual | 2h | 2018-10-13 17:00 A | 2018-10-13 20:00 A | 14 | 100% |  |  |  |  | Calendar 1 | 王安栋 [50%]; 涂弘森 [50%] | 2h | 2h | 涂弘森 |
| 18 | 1.2.12 | 甘特图完善V0.2 | manual | 2h | 2018-10-13 17:00 A | 2018-10-13 20:00 A | 9FS+27h | 100% |  |  |  |  | Calendar 1 | 王安栋 | 2h | 2h | 王安栋 |
| 19 | 1.2.13 | 需求工程项目计划V0.2 | manual | 2h | 2018-10-13 17:00 A | 2018-10-13 20:00 A | 12FS+22h | 100% |  |  |  |  | Calendar 1 | 左文正 [50%]; 刘向辉 [50%] | 2h | 2h | 左文正 |
| 20 | 1.2.14 | 小组第四次会议 | manual | 1h | 2018-10-17 19:00 A | 2018-10-17 20:00 A | 14FS+9h | 100% |  |  |  |  | Calendar 1 | 左文正; 陈祥斌; 刘向辉; 涂弘森; 王安栋 | 5h | 5h | 左文正 |
| 21 | 1.2.15 | 第四次会议记录 | manual | 0.5h | 2018-10-18 08:00 A | 2018-10-18 08:30 A | 20 | 100% |  |  |  |  |  | 左文正 | 0.5h | 0.5h |  |
| 22 | 1.2.16 | 需求项目计划完善V1.0 | manual | 2h | 2018-10-17 19:00 A | 2018-10-18 18:00 A | 19FS+9h | 100% |  |  |  |  | Calendar 1 | 刘向辉 | 2h | 2h | 刘向辉 |
| 23 | 1.2.17 | WBS、OBS修改0.2 | manual | 3h | 2018-10-18 17:00 A | 2018-10-19 18:00 A | 10FS+36h | 100% |  |  |  |  | Calendar 1 | 左文正 [50%]; 刘向辉 [50%] | 3h | 3h | 左文正 |
| 24 | 1.2.18 | 甘特图完善1.1 | manual | 2.5h | 2018-10-18 17:00 A | 2018-10-19 17:30 A | 19FS+10h | 100% |  |  |  |  | Calendar 1 | 王安栋 | 2.5h | 2.5h |  |
| 25 | 1.2.19 | 小组第五次会议 | manual | 1h | 2018-10-19 17:00 A | 2018-10-19 18:00 A | 20FS+2h | 100% |  |  |  |  | Calendar 1 | 左文正; 陈祥斌; 刘向辉; 涂弘森; 王安栋 | 5h | 5h | 左文正 |
| 26 | 1.2.20 | 第五次会议记录 | manual | 0.5h | 2018-10-19 16:00 A | 2018-10-19 16:30 A | 25FS-1h | 100% |  |  |  |  |  | 左文正 | 0.5h | 0.5h |  |
| 27 | 1.2.21 | 项目章程 | milestone, manual | 3h | 2018-10-20 17:00 A | 2018-10-21 18:00 A | 25FS+1h | 100% |  |  |  |  | Calendar 1 | 涂弘森 | 3h | 3h | 涂弘森 |
| 28 | 1.2.22 | 项目总体计划 | milestone, manual | 1.5h | 2018-10-20 19:00 A | 2018-10-21 17:30 A | 25FS+2h | 100% |  |  |  |  | Calendar 1 | 王安栋 | 1.5h | 1.5h | 王安栋 |
| 29 | 1.2.23 | 甘特图完善1.2 | manual | 1.5h | 2018-10-20 17:30 A | 2018-10-20 20:00 A | 24FS+2h | 100% |  |  |  |  | Calendar 1 | 王安栋 | 1.5h | 1.5h |  |
| 30 | 1.2.24 | 需求工程项目计划—初步0.3 | milestone, manual | 2h | 2018-10-21 17:00 A | 2018-10-21 19:00 A | 19FS+50h | 100% |  |  |  |  |  | 刘向辉 | 2h | 2h |  |
| 31 | 1.2.25 | 小组第六次会议 | manual | 1h | 2018-10-26 19:00 A | 2018-10-26 20:00 A | 25FS+14h | 100% |  |  |  |  | Calendar 1 | 左文正; 陈祥斌; 刘向辉; 涂弘森; 王安栋 | 5h | 5h | 左文正 |
| 32 | 1.2.26 | 第六次会议记录 | manual | 0.5h | 2018-10-26 16:00 A | 2018-10-26 16:30 A | 31FS-1h | 100% |  |  |  |  |  | 左文正 | 0.5h | 0.5h |  |
| 33 | 1.2.27 | 需求工程项目报告1.0和需求项目答辩ppt0.2 | manual | 3h | 2018-10-28 08:00 A | 2018-10-28 11:00 A | 30 | 100% |  |  |  |  |  | 刘向辉 | 3h | 3h |  |
| 34 | 1.2.28 | QA计划 | milestone, manual | 4h | 2018-10-27 17:00 A | 2018-10-28 12:00 A | 31FS+4h | 100% |  |  |  |  |  | 涂弘森 | 4h | 4h |  |
| 35 | 1.2.29 | 甘特图完善1.3 | manual | 2h | 2018-10-27 17:00 A | 2018-10-28 10:00 A | 29FS+30h | 100% |  |  |  |  |  | 王安栋 | 2h | 2h |  |
| 36 | 1.2.30 | 甘特图1.4 | manual | 1.5h | 2018-10-28 15:00 A | 2018-10-28 16:30 A | 35FS+4h | 100% |  |  |  |  |  | 王安栋 | 1.5h | 1.5h |  |
| 37 | 1.2.31 | 小组第七次会议 | milestone, manual | 1h | 2018-10-31 17:00 A | 2018-10-31 18:00 A | 31FS+8h | 100% |  |  |  |  | Calendar 1 | 左文正; 陈祥斌; 刘向辉; 涂弘森; 王安栋 | 5h | 5h | 左文正 |
| 38 | 1.2.32 | 第七次会议记录 | manual | 0.5h | 2018-10-31 17:00 A | 2018-11-01 08:30 A | 37FS-1h | 100% |  |  |  |  |  | 左文正 | 0.5h | 0.5h |  |
| 39 | 1.2.33 | 经济可行性报告0.2 | manual | 1d | 2018-11-01 17:00 A | 2018-11-01 19:00 A | 17 | 100% |  |  |  |  |  | 涂弘森 | 2h | 2h |  |
| 40 | 1.2.34 | 需求工程项目报告1.1 | manual | 1d | 2018-10-29 14:00 A | 2018-10-29 16:00 A | 33FS+10h | 100% |  |  |  |  |  | 刘向辉 | 2h | 2h |  |
| 41 | 1.2.35 | 甘特图1.5 | manual | 1h | 2018-11-06 17:00 A | 2018-11-06 18:00 A | 36FS+12h | 100% |  |  |  |  |  | 王安栋 | 1h | 1h |  |
| 42 | 1.2.36 | 第八次会议 | milestone, manual | 2h | 2018-11-09 17:00 A | 2018-11-09 19:00 A | 37FS+14h | 100% |  |  |  |  |  | 左文正; 陈祥斌; 刘向辉; 涂弘森; 王安栋 | 10h | 10h |  |
| 43 | 1.2.37 | 第八次会议记录 | manual | 0.5h | 2018-11-09 17:00 A | 2018-11-09 17:30 A | 42FS-1h | 100% |  |  |  |  |  | 左文正 | 0.5h | 0.5h |  |
| 44 | 1.2.38 | 需求工程项目报告1.2引言-需求工程计划（1-6） | manual | 2h | 2018-11-10 17:00 A | 2018-11-10 19:00 A | 40FS+18h | 100% |  |  |  |  |  | 王安栋 | 2h | 2h |  |
| 45 | 1.2.39 | 需求工程项目报告1.2质量管理计划、沟通管理计划（7-8） | manual | 1d | 2018-11-10 17:00 A | 2018-11-10 19:00 A | 40FS+18h | 100% |  |  |  |  |  | 涂弘森 | 2h | 2h |  |
| 46 | 1.2.40 | 需求工程项目报告1.2成本管理计划、项目范围计划（9-10） | manual | 1d | 2018-11-10 17:00 A | 2018-11-10 19:00 A | 40FS+18h | 100% |  |  |  |  |  | 左文正 | 2h | 2h |  |
| 47 | 1.2.41 | 需求工程项目报告1.2配置管理计划、项目时间计划（11-12） | manual | 1d | 2018-11-10 17:00 A | 2018-11-10 19:00 A | 40FS+18h | 100% |  |  |  |  |  | 陈祥斌 | 2h | 2h |  |
| 48 | 1.2.42 | 需求工程项目报告1.2人力资源计划、风险管理计划（13-14） | manual | 1d | 2018-11-01 09:00 A | 2018-11-01 11:00 A | 40FS+18h | 100% |  |  |  |  |  | 刘向辉 | 2h | 2h |  |
| 49 | 1.2.43 | 第九次会议 | milestone, manual | 2h | 2018-11-16 17:00 A | 2018-11-16 19:00 A | 42FS+14h | 100% |  |  |  |  |  | 左文正; 陈祥斌; 刘向辉; 涂弘森; 王安栋 | 10h | 10h |  |
| 50 | 1.2.44 | 第九次会议记录 | manual | 0.5h | 2018-11-16 17:00 A | 2018-11-16 17:30 A | 49FS-1h | 100% |  |  |  |  |  | 左文正 | 0.5h | 0.5h |  |
| 51 | 1.2.45 | 需求工程项目报告1.3 | milestone, manual | 2h | 2018-11-18 08:00 A | 2018-11-18 10:00 A | 48FS+133h | 100% |  |  |  |  |  | 左文正 [20%]; 陈祥斌 [20%]; 刘向辉 [20%]; 涂弘森 [20%]; 王安栋 [20%] | 2h | 2h |  |
| 52 | 1.2.46 | 需求工程项目答辩PPT0.3 | manual | 2h | 2018-11-18 15:00 A | 2018-11-18 17:00 A | 51FS-2h | 100% |  |  |  |  |  | 左文正 [20%]; 陈祥斌 [20%]; 刘向辉 [20%]; 涂弘森 [20%]; 王安栋 [20%] | 2h | 2h |  |
| 53 | 1.2.47 | 甘特图1.6 | manual | 3h | 2018-11-21 17:00 A | 2018-11-22 11:00 A | 41 | 100% |  |  |  |  |  | 王安栋 | 3h | 3h |  |

| ID | WBS | Task | Type | Duration | Start | Finish | Predecessors | Complete | Actual start | Actual finish | Calendar | Resources | Work | Actual work | 总负责人 |
| --- | --- | --- | --- | --- | --- | --- | --- | --- | --- | --- | --- | --- | --- | --- | --- |
| 54 | 1.3 | **项目工程** |  | 73h | 2018-11-19 17:00 | 2018-12-25 19:00 | 6 | 100% | 2018-11-13 17:00 | 2018-12-30 19:00 | Calendar 1 |  | 215h | 215h |  |
| 55 | 1.3.1 | **需求获取** |  | 67h | 2018-11-22 17:00 | 2018-12-25 19:00 |  | 100% | 2018-11-13 17:00 | 2018-12-30 18:00 | Calendar 1 |  | 86h | 86h |  |
| 56 | 1.3.1.1 | **项目下达者需求访谈** |  | 100d | 2018-11-22 17:00 A | 2018-12-17 18:00 A |  | 100% |  |  |  |  | 15h | 15h |  |
| 57 | 1.3.1.1.1 | 项目下达者需求第1次访谈 | manual | 1h | 2018-11-22 17:00 A | 2018-11-22 18:00 A |  | 100% |  |  |  | 左文正; 陈祥斌; 刘向辉; 涂弘森; 王安栋 | 5h | 5h |  |
| 58 | 1.3.1.1.2 | 项目下达者需求第2次访谈 | manual | 1h | 2018-12-11 17:00 A | 2018-12-11 18:00 A | 57 | 100% |  |  |  | 左文正; 陈祥斌; 刘向辉; 涂弘森; 王安栋 | 5h | 5h |  |
| 59 | 1.3.1.1.3 | 项目下达者需求第3次访谈 | manual | 1h | 2018-12-17 17:00 A | 2018-12-17 18:00 A | 58 | 100% |  |  |  | 左文正; 陈祥斌; 刘向辉; 涂弘森; 王安栋 | 5h | 5h |  |
| 60 | 1.3.1.2 | 小组第十次会议 | manual | 1h | 2018-11-23 16:00 A | 2018-11-23 17:00 A | 51FS+45h | 100% |  |  |  | 左文正; 陈祥斌; 刘向辉; 涂弘森; 王安栋 | 5h | 5h |  |
| 61 | 1.3.1.3 | 第十次会议记录 | manual | 0.5h | 2018-11-23 16:00 A | 2018-11-23 16:30 A | 60FS-1h | 100% |  |  |  | 左文正 | 0.5h | 0.5h |  |
| 62 | 1.3.1.4 | 需求愿景 | manual | 2h | 2018-11-23 08:00 A | 2018-11-23 10:00 A | 57 | 100% |  |  |  | 左文正 | 2h | 2h |  |
| 63 | 1.3.1.5 | 关联图 | manual | 2h | 2018-11-24 08:00 A | 2018-11-24 10:00 A | 60 | 100% |  |  |  | 王安栋 [70%]; 涂弘森 [30%] | 2h | 2h |  |
| 64 | 1.3.1.6 | 生态系统图 | manual | 2h | 2018-11-24 17:00 A | 2018-11-24 20:00 A | 60FS+2h | 100% |  |  | Calendar 1 | 刘向辉 [30%]; 陈祥斌 [70%] | 2h | 2h | 刘向辉 |
| 65 | 1.3.1.7 | 鱼骨图 | manual | 2h | 2018-11-24 10:00 A | 2018-11-24 12:00 A | 60FS+2h | 100% |  |  |  | 左文正 [70%]; 刘向辉 [30%] | 2h | 2h |  |
| 66 | 1.3.1.8 | web界面原型0.1 | manual | 2h | 2018-11-13 17:00 A | 2018-11-13 19:00 A | 62 | 100% |  |  |  | 涂弘森 | 2h | 2h |  |
| 67 | 1.3.1.9 | web界面原型0.2 | manual | 2h | 2018-11-14 17:00 A | 2018-11-14 19:00 A | 66 | 100% |  |  |  | 涂弘森 | 2h | 2h |  |
| 68 | 1.3.1.10 | web界面原型0.3 | manual | 2h | 2018-11-23 08:00 A | 2018-11-23 10:00 A | 67 | 100% |  |  |  | 涂弘森 | 2h | 2h |  |
| 69 | 1.3.1.11 | web界面原型0.4 | manual | 2h | 2018-11-16 17:00 A | 2018-11-16 19:00 A | 68 | 100% |  |  |  | 涂弘森 | 2h | 2h |  |
| 70 | 1.3.1.12 | web界面原型0.5 | manual | 2h | 2018-11-17 17:00 A | 2018-11-17 19:00 A | 69 | 100% |  |  |  | 涂弘森 | 2h | 2h |  |
| 71 | 1.3.1.13 | web界面原型初步 | manual | 2h | 2018-11-18 17:00 A | 2018-11-18 19:00 A | 70 | 100% |  |  |  | 涂弘森 | 2h | 2h |  |
| 72 | 1.3.1.14 | APP界面原型初步 | manual | 5h | 2018-11-24 13:00 A | 2018-11-25 09:00 A | 63 | 100% |  |  |  | 王安栋; 刘向辉; 左文正; 陈祥斌 | 20h | 20h |  |
| 73 | 1.3.1.15 | 小组第十一次会议 | milestone, manual | 1h | 2018-11-30 10:00 A | 2018-11-30 11:00 A | 60FS+50h | 100% |  |  |  | 左文正; 陈祥斌; 刘向辉; 涂弘森; 王安栋 | 5h | 5h |  |
| 74 | 1.3.1.16 | 第十一次会议记录 | manual | 0.5h | 2018-11-30 10:00 A | 2018-11-30 10:30 A | 73FS-1h | 100% |  |  |  | 左文正 | 0.5h | 0.5h |  |
| 75 | 1.3.1.17 | 游客用户代表访谈 | manual | 1h | 2018-12-30 17:00 A | 2018-12-30 18:00 A |  | 100% |  |  | Calendar 1 | 王安栋; 刘向辉; 左文正; 陈祥斌; 涂弘森 | 5h | 5h | 王安栋 |
| 76 | 1.3.1.18 | 学生用户代表访谈 | manual | 1h | 2018-12-30 17:00 A | 2018-12-30 18:00 A |  | 100% |  |  | Calendar 1 | 陈祥斌; 刘向辉; 左文正; 涂弘森; 王安栋 | 5h | 5h | 陈祥斌 |
| 77 | 1.3.1.19 | 管理员用户第一次访谈 | manual | 1h | 2018-12-16 17:00 A | 2018-12-16 19:00 |  | 100% |  | 2018-12-16 18:00 | Calendar 1 | 涂弘森; 刘向辉; 左文正; 陈祥斌; 王安栋 | 5h | 5h | 刘向辉 |
| 78 | 1.3.1.20 | 教师用户代表访谈 | manual | 1h | 2018-12-21 17:00 A | 2018-12-21 18:00 A |  | 100% |  |  | Calendar 1 | 刘向辉; 左文正; 陈祥斌; 涂弘森; 王安栋 | 5h | 5h | 左文正 |

| ID | WBS | Task | Type | Duration | Start | Finish | Predecessors | Complete | Actual start | Actual finish | Calendar | Resources | Work | Actual work | 总负责人 |
| --- | --- | --- | --- | --- | --- | --- | --- | --- | --- | --- | --- | --- | --- | --- | --- |
| 79 | 1.3.2 | **需求分析** |  | 21h | 2018-11-24 17:00 | 2018-12-04 19:00 | 55 | 100% | 2018-12-10 17:00 | 2018-12-24 20:00 | Calendar 1 |  | 19.5h | 19.5h |  |
| 80 | 1.3.2.1 | 需求愿景0.2 | manual | 1d | 2018-12-10 17:00 A | 2018-12-10 19:00 A |  | 100% |  |  |  | 左文正 | 2h | 2h |  |
| 81 | 1.3.2.2 | 设计流程图 | manual | 4h | 2018-12-20 17:00 A | 2018-12-21 20:00 A | 60FS+5h | 100% |  |  | Calendar 1 | 王安栋 [50%]; 涂弘森 [50%] | 4h | 4h | 涂弘森 |
| 82 | 1.3.2.3 | 分析可实现性 | manual | 1.5h | 2018-12-21 17:00 A | 2018-12-21 19:30 A | 60FS+7h | 100% |  |  | Calendar 1 | 刘向辉 | 1.5h | 1.5h | 左文正 |
| 83 | 1.3.2.4 | 排列需求优先级 | manual | 1h | 2018-12-23 17:00 A | 2018-12-23 18:00 A | 60FS+8h | 100% |  |  | Calendar 1 | 陈祥斌 [50%]; 左文正 [50%] | 1h | 1h | 刘向辉 |
| 84 | 1.3.2.5 | 创建数据字典和ER图 | manual | 4h | 2018-12-23 17:00 A | 2018-12-24 20:00 A | 73 | 100% |  |  | Calendar 1 | 王安栋 | 4h | 4h | 涂弘森 |
| 85 | 1.3.2.6 | 需求分析计划 | manual | 4h | 2018-12-20 17:00 A | 2018-12-21 20:00 A | 84 | 100% |  |  | Calendar 1 | 陈祥斌 | 4h | 4h | 陈祥斌 |
| 86 | 1.3.2.7 | 分析接口 | manual | 2h | 2018-12-20 17:00 A | 2018-12-20 20:00 A | 73FS+4h | 100% |  |  | Calendar 1 | 涂弘森 | 2h | 2h | 涂弘森 |
| 87 | 1.3.2.8 | 将需求分配到子系统 | manual | 1h | 2018-12-20 17:00 A | 2018-12-20 18:00 A | 73FS+4h | 100% |  |  | Calendar 1 | 陈祥斌 [30%]; 刘向辉 [30%]; 王安栋 [40%] | 1h | 1h | 左文正 |
| 88 | 1.3.3 | **需求验证** |  | 41h | 2018-12-03 17:00 | 2018-12-23 19:00 | 79 | 100% | 2018-12-07 17:00 | 2018-12-30 19:00 | Calendar 1 |  | 109.5h | 109.5h |  |
| 89 | 1.3.3.1 | 管理员用户第二次访谈 | manual | 1h | 2018-12-23 08:00 A | 2018-12-23 09:00 A | 77 | 100% |  |  |  | 涂弘森; 王安栋; 刘向辉 | 3h | 3h |  |
| 90 | 1.3.3.2 | 小组第十二次会议 | milestone, manual | 1h | 2018-12-07 17:00 A | 2018-12-07 18:00 A | 73FS+14h | 100% |  |  | Calendar 1 | 左文正; 陈祥斌; 刘向辉; 涂弘森; 王安栋 | 5h | 5h | 左文正 |
| 91 | 1.3.3.3 | 第十二次会议记录 | manual | 0.5h | 2018-12-07 17:00 A | 2018-12-07 17:30 A | 90FS-1h | 100% |  |  |  | 左文正 | 0.5h | 0.5h |  |
| 92 | 1.3.3.4 | app界面原型修改 | manual | 4h | 2018-12-09 08:00 A | 2018-12-09 12:00 A | 72 | 100% |  |  |  | 左文正 [25%]; 陈祥斌 [25%]; 刘向辉 [25%]; 王安栋 [25%] | 4h | 4h |  |
| 93 | 1.3.3.5 | web界面原型修改 | manual | 4h | 2018-12-09 08:00 A | 2018-12-09 12:00 A | 71 | 100% |  |  |  | 涂弘森 | 4h | 4h |  |
| 94 | 1.3.3.6 | 小组第十三次会议 | milestone, manual | 1h | 2018-12-14 19:00 A | 2018-12-14 20:00 A | 90FS+14h | 100% |  |  | Calendar 1 | 左文正; 陈祥斌; 刘向辉; 涂弘森; 王安栋 | 5h | 5h | 左文正 |
| 95 | 1.3.3.7 | 第十三次会议记录 | manual | 0.5h | 2018-12-14 16:00 A | 2018-12-14 16:30 A | 94FS-1h | 100% |  |  |  | 左文正 | 0.5h | 0.5h |  |
| 96 | 1.3.3.8 | 用户手册上半部分 | manual | 3h | 2018-12-22 17:00 A | 2018-12-23 11:00 A |  | 100% |  |  |  | 涂弘森 | 3h | 3h |  |
| 97 | 1.3.3.9 | 用户手册下半部分 | manual | 2h | 2018-12-23 17:00 A | 2018-12-23 19:00 A |  | 100% |  |  |  | 涂弘森 | 2h | 2h |  |
| 98 | 1.3.3.10 | 测试用例 | manual | 5h | 2018-12-23 08:00 A | 2018-12-23 14:00 A |  | 100% |  |  |  | 左文正 [50%]; 陈祥斌 [50%] | 5h | 5h |  |
| 99 | 1.3.3.11 | 用例文档 | manual | 5h | 2018-12-23 08:00 A | 2018-12-23 14:00 A |  | 100% |  |  |  | 左文正 [50%]; 陈祥斌 [50%] | 5h | 5h |  |
| 100 | 1.3.3.12 | 第十四次会议记录 | manual | 0.5h | 2018-12-21 16:00 A | 2018-12-21 16:30 A | 95 | 100% |  |  |  | 左文正 | 0.5h | 0.5h |  |
| 101 | 1.3.3.13 | 小组第十四次会议 | milestone, manual | 1h | 2018-12-21 19:00 A | 2018-12-21 20:00 A | 94FS+13h | 100% |  |  | Calendar 1 | 左文正; 陈祥斌; 刘向辉; 涂弘森; 王安栋 | 5h | 5h | 左文正 |
| 102 | 1.3.3.14 | 软件需求规格说明书（SRS） | milestone, manual | 8h | 2018-12-21 17:00 A | 2018-12-24 20:00 A | 96, 98, 99, 84 | 100% |  |  | Calendar 1 | 陈祥斌; 左文正; 刘向辉; 涂弘森; 王安栋 | 40h | 40h | 陈祥斌 |
| 103 | 1.3.3.15 | 软件需求规格说明书修改 | manual | 3h | 2018-12-22 17:00 A | 2018-12-23 18:00 A | 102 | 100% |  |  | Calendar 1 | 左文正; 陈祥斌; 刘向辉; 涂弘森; 王安栋 | 15h | 15h |  |
| 104 | 1.3.3.16 | 甘特图1.7 | manual | 1d | 2018-12-25 17:00 A | 2018-12-25 19:00 A | 53 | 100% |  |  |  | 王安栋 | 2h | 2h |  |
| 105 | 1.3.3.17 | SRSppt | manual | 2h | 2018-12-30 17:00 A | 2018-12-30 19:00 A | 103 | 100% |  |  |  | 左文正; 陈祥斌; 刘向辉; 涂弘森; 王安栋 | 10h | 10h |  |

| ID | WBS | Task | Type | Duration | Start | Finish | Predecessors | Complete | Remaining | Actual start | Total slack | Free slack | Calendar | Resources | Work | Actual work | 总负责人 |
| --- | --- | --- | --- | --- | --- | --- | --- | --- | --- | --- | --- | --- | --- | --- | --- | --- | --- |
| 106 | 1.4 | **项目控制** |  | 41h | 2018-12-09 17:00 | 2018-12-29 18:00 | 54 | 78% | 9.2h | 2018-12-12 17:00 |  |  | Calendar 1 |  | 124h | 97h |  |
| 107 | 1.4.1 | 第一次项目请求变更 | manual | 2h | 2018-12-12 17:00 A | 2018-12-12 19:00 A |  | 100% |  |  |  |  |  | 刘向辉 | 2h | 2h |  |
| 108 | 1.4.2 | 第二次项目请求变更 | manual | 1d | 2019-01-06 17:00 A | 2019-01-06 19:00 A |  | 100% |  |  |  |  |  | 刘向辉; 陈祥斌; 涂弘森; 王安栋; 左文正 | 10h | 10h |  |
| 109 | 1.4.3 | 小组第十五次会议 | milestone, manual | 1h | 2018-12-28 19:00 A | 2018-12-28 20:00 A | 101FS+13h | 100% |  |  |  |  | Calendar 1 | 左文正; 陈祥斌; 刘向辉; 涂弘森; 王安栋 | 5h | 5h | 左文正 |
| 110 | 1.4.4 | 第十五次会议记录 | manual | 0.5h | 2018-12-28 16:00 A | 2018-12-28 16:30 A | 109FS-1h | 100% |  |  |  |  |  | 左文正 | 0.5h | 0.5h |  |
| 111 | 1.4.5 | 数据库设计 | manual | 2h | 2018-12-29 17:00 A | 2018-12-29 20:00 A | 84 | 100% |  |  |  |  | Calendar 1 | 王安栋 | 2h | 2h | 陈祥斌 |
| 112 | 1.4.6 | 系统设计与实现计划 | manual | 3h | 2018-12-29 08:00 A | 2018-12-29 11:00 A | 84, 111 | 100% |  |  |  |  | Calendar 1 | 王安栋 [20%]; 涂弘森 [20%]; 陈祥斌 [20%]; 刘向辉 [20%]; 左文正 [20%] | 3h | 3h | 刘向辉 |
| 113 | 1.4.7 | jad会议 | manual | 1h | 2019-01-03 17:00 A | 2019-01-03 18:00 A | 77, 89, 75, 76, 78 | 100% |  |  |  |  |  | 陈祥斌; 刘向辉; 涂弘森; 王安栋; 左文正 | 5h | 5h |  |
| 114 | 1.4.8 | 管理员需求评分表 | manual | 1d | 2019-01-03 17:00 A | 2019-01-03 19:00 A | 113 | 100% |  |  |  |  |  | 陈祥斌; 刘向辉; 涂弘森; 王安栋; 左文正 | 10h | 10h |  |
| 115 | 1.4.9 | 学生需求评分表 | manual | 1d | 2019-01-03 17:00 A | 2019-01-03 19:00 A | 113 | 100% |  |  |  |  |  | 陈祥斌; 刘向辉; 涂弘森; 王安栋; 左文正 | 10h | 10h |  |
| 116 | 1.4.10 | 教师需求评分表 | manual | 1d | 2019-01-04 17:00 A | 2019-01-04 19:00 A | 113 | 100% |  |  |  |  |  | 陈祥斌; 刘向辉; 涂弘森; 王安栋; 左文正 | 10h | 10h |  |
| 117 | 1.4.11 | 游客需求评分表 | manual | 1d | 2019-01-04 17:00 A | 2019-01-04 19:00 A | 113 | 100% |  |  |  |  |  | 陈祥斌; 刘向辉; 涂弘森; 王安栋; 左文正 | 10h | 10h |  |
| 118 | 1.4.12 | 第十六次会议记录 | manual | 0.5h | 2019-01-04 16:00 A | 2019-01-04 16:30 A | 110 | 100% |  |  |  |  |  | 左文正 | 0.5h | 0.5h |  |
| 119 | 1.4.13 | 小组第十六次会议 | manual | 1h | 2019-01-04 19:00 A | 2019-01-04 20:00 A | 109FS+13h | 100% |  |  |  |  | Calendar 1 | 左文正; 陈祥斌; 刘向辉; 涂弘森; 王安栋 | 5h | 5h | 左文正 |
| 120 | 1.4.14 | SRS修改 | manual | 2h | 2019-01-05 17:00 A | 2019-01-05 19:00 A | 114, 115, 116, 117 | 100% |  |  |  |  |  | 陈祥斌; 刘向辉; 左文正 | 6h | 6h |  |
| 121 | 1.4.15 | 变更申请报告 | manual | 1d | 2019-01-06 17:00 A | 2019-01-06 19:00 A | 108 | 100% |  |  |  |  |  | 刘向辉 | 2h | 2h |  |
| 122 | 1.4.16 | CCB章程 | manual | 1d | 2019-01-07 17:00 A | 2019-01-07 19:00 A | 108 | 100% |  |  |  |  |  | 刘向辉 | 2h | 2h |  |
| 123 | 1.4.17 | 软件需求变更文档 | manual | 2h | 2019-01-07 17:00 A | 2019-01-07 20:00 A | 108 | 100% |  |  |  |  | Calendar 1 | 刘向辉 | 3h | 3h | 左文正 |
| 124 | 1.4.18 | 用户手册修改 | manual | 3h | 2019-01-08 08:00 A | 2019-01-08 11:00 A | 108 | 100% |  |  |  |  |  | 王安栋 | 3h | 3h |  |
| 125 | 1.4.19 | web界面修改 | manual | 2h | 2019-01-08 08:00 A | 2019-01-08 10:00 A | 108 | 100% |  |  |  |  |  | 涂弘森 | 2h | 2h |  |
| 126 | 1.4.20 | 测试用例、数据字典修改 | manual | 2h | 2019-01-08 17:00 A | 2019-01-08 19:00 A | 108 | 100% |  |  |  |  |  | 陈祥斌; 左文正 | 4h | 4h |  |
| 127 | 1.4.21 | 文档整理 | manual | 2h | 2019-01-09 08:00 A | 2019-01-09 10:00 A | 121, 122, 123, 124, 125, 126 | 100% |  |  |  |  |  | 刘向辉 | 2h | 2h |  |
| 128 | 1.4.22 | 软件需求变更文档修改 |  | 3h | 2019-01-10 19:00 | 2019-01-11 20:00 | 123FS+5h |  |  |  | -11d | 0d | Calendar 1 | 陈祥斌 | 3h |  | 王安栋 |
| 129 | 1.4.23 | 软件概要设计说明--初步 | milestone, manual | 4h | 2018-12-27 17:00 | 2018-12-28 20:00 | 111SF, 112SF |  |  |  |  |  | Calendar 1 | 左文正; 陈祥斌; 刘向辉; 涂弘森; 王安栋 | 20h |  |  |
| 130 | 1.4.24 | 软件概要设计说明--修改 | manual | 4h | 2018-12-29 17:00 | 2018-12-30 10:00 | 129 |  |  |  |  |  | Calendar 1 | 陈祥斌 [50%]; 刘向辉 [50%] | 4h |  |  |

| ID | WBS | Task | Type | Duration | Start | Finish | Predecessors | Complete | Remaining | Calendar | Resources | Work | Actual work | 总负责人 |
| --- | --- | --- | --- | --- | --- | --- | --- | --- | --- | --- | --- | --- | --- | --- |
| 131 | 1.5 | **项目收尾** |  | 28h | 2019-01-01 17:00 | 2019-01-13 19:00 | 106 |  |  | Calendar 1 |  | 104.5h |  |  |
| 132 | 1.5.1 | 项目检验 | manual | 7h | 2019-01-01 17:00 | 2019-01-04 18:00 | 119FS-1h |  |  | Calendar 1 | 左文正 [20%]; 陈祥斌 [20%]; 刘向辉 [20%]; 涂弘森 [20%]; 王安栋 [20%] | 9h |  | 刘向辉 |
| 133 | 1.5.2 | 项目修改 | manual | 11h | 2019-01-05 19:00 | 2019-01-10 20:00 | 132FS+2h |  |  | Calendar 1 | 左文正; 陈祥斌; 刘向辉; 涂弘森; 王安栋 | 55h |  | 刘向辉 |
| 134 | 1.5.3 | 小组第十七次会议 | milestone, manual | 0h | 2019-01-11 17:00 | 2019-01-11 17:00 | 119FS+13h |  |  | Calendar 1 | 左文正; 陈祥斌; 刘向辉; 涂弘森; 王安栋 |  |  | 左文正 |
| 135 | 1.5.4 | 第十七次会议记录 | manual | 0.5h | 2019-01-11 16:00 | 2019-01-11 16:30 | 134FS-1h |  |  |  | 左文正 | 0.5h |  |  |
| 136 | 1.5.5 | 项目总结报告 | milestone, manual | 4h | 2019-01-14 08:00 | 2019-01-14 12:00 | 133 |  |  |  | 左文正; 陈祥斌; 刘向辉; 涂弘森; 王安栋 | 20h |  |  |
| 137 | 1.5.6 | 项目审核 | milestone, manual | 2h | 2019-01-16 17:00 | 2019-01-16 19:00 | 136 |  |  | Calendar 1 | 左文正; 陈祥斌; 刘向辉; 涂弘森; 王安栋 | 10h |  |  |
| 138 | 1.5.7 | 项目提交 | milestone, manual | 2h | 2019-01-16 17:00 | 2019-01-16 19:00 | 137 |  |  |  | 刘向辉; 左文正; 陈祥斌; 涂弘森; 王安栋 | 10h |  |  |
| 140 | 1.6 | **UMLPPT制作** |  | 109d | 2018-10-12 17:00 A | 2018-11-08 19:00 |  | 72% | 30.74d |  |  | 66.97h | 31.97h |  |
| 141 | 1.6.1 | uml概述PPT | manual | 3h | 2018-10-12 17:00 A | 2018-10-13 18:00 A | 14 | 100% |  | Calendar 1 | 左文正 [33%]; 刘向辉 [33%]; 陈祥斌 [33%] | 2.97h | 2.97h |  |
| 142 | 1.6.2 | uml概述PPT | manual | 1d | 2018-10-16 17:00 A | 2018-10-17 10:00 A | 141 | 100% |  |  | 刘向辉 [50%]; 陈祥斌 [50%] | 4h | 4h |  |
| 143 | 1.6.3 | uml工具PPT0.1 | manual | 6h | 2018-10-20 08:00 A | 2018-10-20 15:00 A |  | 100% |  |  | 左文正 [50%]; 陈祥斌 [50%] | 6h | 6h |  |
| 144 | 1.6.4 | uml工具PPT修改0.2 | manual | 2h | 2018-10-27 17:00 A | 2018-10-28 10:00 A | 143FS+16h | 100% |  |  | 王安栋 | 2h | 2h |  |
| 145 | 1.6.5 | uml基础1ppt0.1 | manual | 6h | 2018-10-27 17:00 A | 2018-10-28 15:00 A | 31FS+3h | 100% |  |  | 左文正 [50%]; 陈祥斌 [50%] | 6h | 6h |  |
| 146 | 1.6.6 | uml基础1ppt完善0.2 | manual | 2h | 2018-11-02 17:00 A | 2018-11-03 10:00 A | 145FS+14h | 100% |  |  | 陈祥斌; 左文正 | 4h | 4h |  |
| 147 | 1.6.7 | uml基础2PPT0.1 | manual | 5h | 2018-11-03 17:00 A | 2018-11-04 14:00 A | 37FS+2h | 100% |  |  | 涂弘森 [20%]; 左文正 [20%]; 陈祥斌 [20%]; 刘向辉 [20%]; 王安栋 [20%] | 5h | 5h |  |
| 148 | 1.6.8 | uml基础2PPT修改0.2 | manual | 2h | 2018-11-08 17:00 A | 2018-11-08 19:00 A | 147FS+8h | 100% |  |  | 涂弘森 | 2h | 2h |  |
| 149 | 1.6.9 | uml3PPT | manual | 2h | 2018-12-08 17:00 A | 2018-12-09 16:00 | 148 |  | 2h |  | 刘向辉 | 2h |  |  |
| 150 | 1.6.10 | uml4ppt | manual | 3h | 2018-12-09 16:00 | 2018-12-10 10:00 | 149 |  |  |  | 刘向辉 | 3h |  |  |
| 152 | 1.6.11 | team building1 | manual | 3h | 2018-12-17 08:00 | 2018-12-17 11:00 |  |  |  |  | 刘向辉; 左文正; 陈祥斌; 涂弘森; 王安栋 | 15h |  |  |
| 153 | 1.6.12 | team building2 | manual | 3h | 2019-01-13 08:30 | 2019-01-13 11:30 | 152 |  |  | 需求项目工程 | 刘向辉; 左文正; 陈祥斌; 涂弘森; 王安栋 | 15h |  |  |
